# ProjectNotifications

Schedule from MS Project, 2010-08-05 to 2010-08-20.
Hewlett-Packard Company

## Calendars

- Standard: Mon-Fri 08:00-12:00, 13:00-17:00; Sat-Sun off.

## Resources

| Resource |
| --- |
| Maribel |
| Egael |
| Alan |

## Schedule

| ID | WBS | Task | Duration | Start | Finish | Predecessors | Total slack | Free slack | Constraint | Resources | Work |
| --- | --- | --- | --- | --- | --- | --- | --- | --- | --- | --- | --- |
| 1 | 1 | Set up the test enviroment | 1d | 2010-08-05 08:00 | 2010-08-05 17:00 |  | 11d |  | start no earlier than 2010-08-05 08:00 |  |  |
| 2 | 2 | **Database Implementation** | 1d? | 2010-08-06 08:00 | 2010-08-06 17:00 | 1 | 0.81d | 0d |  |  | 12.5h |
| 4 | 2.1 | IO_GEOINFORMATION | 30min | 2010-08-06 08:00 | 2010-08-06 08:30 |  | 1.75d |  | start no earlier than 2010-08-06 08:00 | Alan | 0.5h |
| 5 | 2.2 | T_GEOINFORMATION | 30min | 2010-08-06 08:00 | 2010-08-06 08:30 |  | 1.75d |  | start no earlier than 2010-08-06 08:00 | Egael | 0.5h |
| 6 | 2.3 | pss_GEOI_IUD | 30min | 2010-08-06 08:00 | 2010-08-06 08:30 |  | 1.75d |  | start no earlier than 2010-08-06 08:00 | Maribel | 0.5h |
| 7 | 2.4 | IO_GEOPOSTAL | 1h | 2010-08-06 08:00 | 2010-08-06 09:00 |  | 1.69d |  | start no earlier than 2010-08-06 08:00 | Egael | 1h |
| 8 | 2.5 | T_GEOPOSTAL | 30min | 2010-08-06 08:00 | 2010-08-06 08:30 |  | 1.75d |  | start no earlier than 2010-08-06 08:00 | Egael | 0.5h |
| 9 | 2.6 | pss_GeoInformationFirst | 3h | 2010-08-06 08:00 | 2010-08-06 11:00 |  | 1.44d |  | start no earlier than 2010-08-06 08:00 | Maribel | 3h |
| 10 | 2.7 | pss_GetLongLat | 30min | 2010-08-06 08:00 | 2010-08-06 08:30 |  | 1.75d |  | start no earlier than 2010-08-06 08:00 | Alan | 0.5h |
| 11 | 2.8 | CalculateDistance Function | 30min | 2010-08-06 08:00 | 2010-08-06 08:30 |  | 1.75d |  | start no earlier than 2010-08-06 08:00 | Alan | 0.5h |
| 12 | 2.9 | LatPlusDistance Function | 30min | 2010-08-06 08:00 | 2010-08-06 08:30 |  | 1.75d |  | start no earlier than 2010-08-06 08:00 | Alan | 0.5h |
| 13 | 2.10 | LongPlusDistance Function | 30min | 2010-08-06 08:00 | 2010-08-06 08:30 |  | 1.75d |  | start no earlier than 2010-08-06 08:00 | Alan | 0.5h |
| 14 | 2.11 | Modification psp_GetSchule TSP02O | 30min | 2010-08-06 08:00 | 2010-08-06 08:30 |  | 1.75d |  | start no earlier than 2010-08-06 08:00 | Egael | 0.5h |
| 15 | 2.12 | Modification psp_GetSchule TIS02O | 1h | 2010-08-06 08:00 | 2010-08-06 09:00 |  | 1.69d |  | start no earlier than 2010-08-06 08:00 | Maribel | 1h |
| 16 | 2.13 | pss_GetGeoSearchSubSelect | 3h | 2010-08-06 08:00 | 2010-08-06 11:00 |  | 1.44d |  | start no earlier than 2010-08-06 08:00 | Maribel | 3h |
| 17 | 2.14 | pss_TemporalGeoIn | 1d? | 2010-08-06 08:00 | 2010-08-06 17:00 |  | 0.81d |  |  |  |  |
| 18 | 3 | **Objects Implementation** | 0.12d | 2010-08-09 08:00 | 2010-08-09 09:00 | 2 | 0.81d | 0d |  |  | 1h |
| 20 | 3.1 | bobjSchoolType | 1h | 2010-08-09 08:00 | 2010-08-09 09:00 |  | 0.81d |  | start no earlier than 2010-01-21 10:00 | Egael | 1h |
| 22 | 4 | **Ibatis Components Implementation** | 0.06d | 2010-08-09 09:00 | 2010-08-09 09:30 | 18 | 0.81d |  |  |  | 3h |
| 24 | 4.1 | Helper | 30min | 2010-08-09 09:00 | 2010-08-09 09:30 |  | 0.81d |  | start no earlier than 2010-08-09 08:00 | Maribel | 0.5h |
| 25 | 4.2 | Helpers | 30min | 2010-08-09 09:00 | 2010-08-09 09:30 |  | 0.81d |  | start no earlier than 2010-01-22 09:00 | Egael | 0.5h |
| 26 | 4.3 | SchoolHelper | 30min | 2010-08-09 09:00 | 2010-08-09 09:30 |  | 0.81d |  | start no earlier than 2010-01-22 10:00 | Alan | 0.5h |
| 27 | 4.4 | School.xml | 30min | 2010-08-09 09:00 | 2010-08-09 09:30 |  | 0.81d |  | start no earlier than 2010-01-22 11:00 | Maribel | 0.5h |
| 28 | 4.5 | sqlmap.config | 30min | 2010-08-09 09:00 | 2010-08-09 09:30 |  | 0.81d |  | start no earlier than 2010-01-22 13:30 | Alan | 0.5h |
| 29 | 4.6 | properties.config | 30min | 2010-08-09 09:00 | 2010-08-09 09:30 |  | 0.81d |  | start no earlier than 2010-01-22 14:00 | Maribel | 0.5h |
| 31 | 5 | Web Service Implementation | 3d | 2010-08-10 08:00 | 2010-08-12 17:00 | 22 | 0d |  | start no earlier than 2010-08-10 08:00 | Maribel; Egael; Alan | 72h |
| 32 | 6 | Interface Implementation | 3d | 2010-08-13 08:00 | 2010-08-17 17:00 | 31 | 0d |  |  | Maribel; Egael; Alan | 72h |
| 33 | 7 | Tests | 3d | 2010-08-18 08:00 | 2010-08-20 17:00 | 32 | 0d |  | start no earlier than 2010-01-28 08:00 | Maribel; Egael; Alan | 72h |
